# Quản lý thư viện sách điện tử

Schedule from MS Project, 2021-07-26 to 2021-11-19, costs in ₫, A marks actual dates.
Cloudy Software

## Calendars

- Standard: Mon-Fri 08:00-12:00, 13:00-17:00; Sat-Sun off. Exceptions (off unless hours are given): 2021-07-27 (Ngày Lễ), 2021-09-02 (Ngày Quốc Khánh), 2021-10-20 (Ngày Quốc Tế Phụ Nữ).

## Resources

| Resource | Rate |
| --- | --- |
| Trường | 80000 |
| Tùng | 60000 |
| Sơn | 60000 |
| Chi phí dự phòng |  |
| Chi phí Hosting & Domain |  |
| Công cụ Visual Studio, Microsoft SQL Server |  |
| Kinh phí đào tạo |  |

## Schedule

| ID | WBS | Task | Duration | Start | Finish | Predecessors | Complete | Remaining | Total slack | Resources | Work | Actual work | Cost | Actual cost |
| --- | --- | --- | --- | --- | --- | --- | --- | --- | --- | --- | --- | --- | --- | --- |
| 1 | 1 | 1.Xác định yêu cầu hệ thống | 4d | 2021-07-26 A | 2021-07-30 A |  | 100% |  |  | Trường; Tùng; Sơn | 96h | 96h | 6,400,000 | 6,400,000 |
| 2 | 2 | **2. Phân tích hệ thống** | 11d | 2021-08-02 A | 2021-08-16 A | 1 | 100% |  |  |  | 168h | 168h | 11,680,000 | 11,680,000 |
| 3 | 2.1 | 2.1 Phân tích phần mềm | 10d | 2021-08-02 A | 2021-08-13 A | 1 | 100% |  |  | Trường; Sơn | 160h | 160h | 11,200,000 | 11,200,000 |
| 4 | 2.2 | 2.2 Báo cáo trạng thái công việc | 1d | 2021-08-16 A | 2021-08-16 A | 3 | 100% |  |  | Tùng | 8h | 8h | 480,000 | 480,000 |
| 5 | 3 | **3.Thiết kế hệ thống** | 25d | 2021-08-17 A | 2021-09-21 A | 2 | 100% |  |  |  | 400h | 400h | 26,240,000 | 26,240,000 |
| 6 | 3.1 | 3.1 Viết tài liệu use-case | 10d | 2021-08-17 A | 2021-08-30 A | 4 | 100% |  |  | Tùng; Trường | 160h | 160h | 11,200,000 | 11,200,000 |
| 7 | 3.2 | 3.2 Viết thiết kế các chức năng | 7d | 2021-08-31 A | 2021-09-09 A | 6 | 100% |  |  | Sơn | 56h | 56h | 3,360,000 | 3,360,000 |
| 8 | 3.3 | 3.3 Viết thiết kế giao diện | 3d | 2021-08-31 A | 2021-09-03 A | 6 | 100% |  |  | Tùng | 24h | 24h | 1,440,000 | 1,440,000 |
| 9 | 3.4 | 3.4 Thiết kế cơ sở dữ liệu | 4d | 2021-08-31 A | 2021-09-06 A | 6 | 100% |  |  | Trường | 32h | 32h | 2,560,000 | 2,560,000 |
| 10 | 3.5 | 3.5 Thiết kế xử lý User | 8d | 2021-09-10 A | 2021-09-21 A | 7, 9 | 100% |  |  | Tùng | 64h | 64h | 3,840,000 | 3,840,000 |
| 11 | 3.6 | 3.6 Thiết kế xử lý Admin | 8d | 2021-09-10 A | 2021-09-21 A | 7, 9 | 100% |  |  | Sơn | 64h | 64h | 3,840,000 | 3,840,000 |
| 12 | 4 | **4.Cài đặt** | 13d | 2021-09-22 A | 2021-10-08 | 5 | 65% | 4.55d | 0d | Công cụ Visual Studio, Microsoft SQL Server [0.1%] | 216h | 140.4h | 17,080,000 | 11,310,000 |
| 13 | 4.1 | 4.1 Cài đặt các Class | 5d | 2021-09-22 A | 2021-09-28 A | 10, 11 | 100% |  |  | Sơn | 40h | 40h | 2,400,000 | 2,400,000 |
| 14 | 4.2 | 4.2 Cài đặt các modum chức năng User | 7d | 2021-09-22 A | 2021-09-30 | 10, 11 | 84% | 1.15d | 1d | Tùng | 56h | 46.8h | 3,360,000 | 2,808,000 |
| 15 | 4.3 | 4.3 Cài đặt các modum chức năng Admin | 7d | 2021-09-22 A | 2021-09-30 | 10, 11 | 84% | 1.15d | 1d | Trường | 56h | 46.8h | 4,480,000 | 3,744,000 |
| 16 | 4.4 | 4.4 Cài đặt các modun tra cứu, tìm kiếm | 3d | 2021-09-29 A | 2021-10-01 | 13 | 28% | 2.15d | 0d | Sơn | 24h | 6.8h | 1,440,000 | 408,000 |
| 17 | 4.5 | 4.5 Cài đặt các modun tạo lập báo cáo | 5d | 2021-10-04 | 2021-10-08 | 13, 14, 15, 16 |  |  | 0d | Tùng | 40h |  | 2,400,000 |  |
| 18 | 5 | 5. Kiểm thử | 10d? | 2021-10-11 | 2021-10-25 | 12 |  |  | 0d | Sơn; Tùng; Trường; Chi phí Hosting & Domain [0.1%] | 240h |  | 19,000,000 |  |
| 19 | 6 | 6. Đào tạo, chuyển giao | 4d? | 2021-10-26 | 2021-10-29 | 18 |  |  | 0d | Tùng; Chi phí dự phòng [0.1%]; Kinh phí đào tạo [0.1%] | 32h |  | 14,920,000 |  |
| 20 | 7 | 7. Vận hành | 13d? | 2021-11-01 | 2021-11-17 | 19 |  |  | 0d | Sơn; Tùng; Trường | 312h |  | 20,800,000 |  |
| 21 | 8 | 8. Đánh giá, tổng kết | 2d? | 2021-11-18 | 2021-11-19 | 20 |  |  | 0d | Trường | 16h |  | 1,280,000 |  |
